Schedule from MS Project XML, 2025-11-26 to 2027-04-09, 9 hours a day, costs in $, A marks actual dates.

## Calendars

- Standard: Mon-Fri 06:00-15:00; Sat-Sun off.

## Schedule

| ID | WBS | Task | Type | Duration | Start | Predecessors | Complete | Remaining | Actual finish | Baseline start | Baseline finish | Baseline duration | Total slack | Free slack | Constraint | Cost | Baseline cost | CustomID | Unique ID |
| --- | --- | --- | --- | --- | --- | --- | --- | --- | --- | --- | --- | --- | --- | --- | --- | --- | --- | --- | --- |
| 1 | 1 | **Building West** |  | 358d | 2025-11-26 A |  | 10% | 322.27d |  | 2025-11-26 | 2027-04-16 | 363d |  |  |  |  | 3,759,300 | - |  |
| 2 | 1.1 | Make Ready |  | 28d | 2025-11-26 A |  | 100% |  | 2026-01-02 | 2025-11-26 | 2026-01-05 | 29d |  |  |  |  | 35,000 | - | 6 |
| 6 | 1.2 | Building Foundation / Basement |  | 74d | 2025-12-18 A |  | 33% | 49.31d |  | 2025-12-18 | 2026-04-06 | 78d | 0.44d | 3.22d |  |  | 490,300 | - | 10 |
| 12 | 1.3 | Core and Shell |  | 96d | 2026-03-20 |  |  |  |  | 2026-03-25 | 2026-08-05 | 96d | 0.44d | 2.22d |  |  | 1,066,000 | - | 15 |
| 19 | 1.4 | Parking Garage |  | 59d | 2026-05-01 |  |  |  |  | 2026-05-06 | 2026-07-27 | 59d | 0.44d | 2.22d |  |  | 120,000 | - | 22 |
| 23 | 1.5 | Interior |  | 158d | 2026-07-24 |  |  |  |  | 2026-07-29 | 2027-03-02 | 155d | 0.33d |  |  |  | 1,036,000 | - | 26 |
| 37 | 1.6 | Existing Building Rennovation |  | 247d | 2025-12-17 A |  | 10% | 222.35d |  | 2025-12-17 | 2026-12-03 | 252d |  | 1.11d |  |  | 707,000 | - | 39 |
| 55 | 1.7 | CUP |  | 96d | 2026-11-27 |  |  |  |  | 2026-12-03 | 2027-04-15 | 96d |  |  |  |  | 305,000 | - | 57 |
| 62 | 1.8 | **Substantial Completion** |  | 0d | 2027-04-09 | 61, 36 |  |  |  | 2027-04-16 | 2027-04-15 |  |  |  |  |  |  | A530 | 65 |
| 3 | 1.1.1 | Permitting |  | 15d | 2025-11-26 A |  | 100% |  | 2025-12-16 | 2025-11-26 | 2025-12-16 | 15d |  |  | start no earlier than 2023-09-04 | 10,000 | 10,000 | A10 | 7 |
| 4 | 1.1.2 | Utilities |  | 18d | 2025-12-10 A | 3FS-5d | 100% |  | 2026-01-02 | 2025-12-10 | 2026-01-05 | 19d |  |  |  | 25,000 | 25,000 | A20 | 8 |
| 5 | 1.1.3 | Construction Start | milestone | 0d | 2025-12-16 A | 3 | 100% |  | 2025-12-16 | 2025-12-17 | 2025-12-16 |  |  |  |  |  |  | A30 | 9 |
| 7 | 1.2.1 | Excavate |  | 10d | 2025-12-18 A | 5FS+1d | 100% |  | 2025-12-31 | 2025-12-18 | 2025-12-31 | 10d |  |  | start no earlier than 2023-09-26 | 40,000 | 40,000 | A40 | 68 |
| 8 | 1.2.2 | Shoring |  | 12d | 2025-12-31 A | 7FS-1d | 100% |  | 2026-01-15 | 2026-01-01 | 2026-01-14 | 10d |  |  |  | 90,000 | 90,000 | A50 | 11 |
| 9 | 1.2.3 | Footings |  | 17d | 2026-01-14 A | 4FS+9d, 8 | 32% | 11.59d |  | 2026-01-13 | 2026-02-09 | 20d | 0.44d |  |  | 100,300 | 100,300 | A60 | 12 |
| 10 | 1.2.4 | Slab On Grade |  | 17d | 2026-02-06 | 9 |  |  |  | 2026-02-11 | 2026-03-05 | 17d | 0.44d |  |  | 140,000 | 140,000 | A70 | 13 |
| 11 | 1.2.5 | Foundation Walls |  | 22d | 2026-03-02 | 10FS-1d |  |  |  | 2026-03-05 | 2026-04-03 | 22d | 0.44d |  |  | 120,000 | 120,000 | A80 | 14 |
| 13 | 1.3.1 | Steel Structure |  | 30d | 2026-03-20 | 11FS-8d |  |  |  | 2026-03-25 | 2026-05-05 | 30d | 0.44d |  |  | 400,000 | 400,000 | A90 | 16 |
| 14 | 1.3.2 | Decking |  | 23d | 2026-05-01 | 13 |  |  |  | 2026-05-06 | 2026-06-05 | 23d | 0.44d |  |  | 56,000 | 56,000 | A100 | 17 |
| 15 | 1.3.3 | Bracing |  | 10d | 2026-06-03 | 14 |  |  |  | 2026-06-08 | 2026-06-19 | 10d | 0.56d |  |  | 130,000 | 130,000 | A110 | 18 |
| 16 | 1.3.4 | Exterior Skin |  | 20d | 2026-06-17 | 15 |  |  |  | 2026-06-22 | 2026-07-17 | 20d | 0.56d |  |  | 300,000 | 300,000 | A120 | 19 |
| 17 | 1.3.5 | Risers (MEPs) |  | 22d | 2026-06-17 | 15SS+3d, 16SS |  |  |  | 2026-06-22 | 2026-07-21 | 22d | 2.22d |  |  | 50,000 | 50,000 | A130 | 20 |
| 18 | 1.3.6 | Roofing |  | 15d | 2026-07-13 | 17FS-4d, 16FS-2d |  |  |  | 2026-07-16 | 2026-08-05 | 15d | 2.22d |  |  | 130,000 | 130,000 | A140 | 21 |
| 20 | 1.4.1 | Landscaping |  | 23d | 2026-05-01 | 14SS |  |  |  | 2026-05-06 | 2026-06-05 | 23d | 0.44d |  |  | 60,000 | 60,000 | A150 | 23 |
| 21 | 1.4.2 | Hardscape |  | 18d | 2026-06-03 | 20 |  |  |  | 2026-06-08 | 2026-07-01 | 18d | 0.44d |  |  | 50,000 | 50,000 | A160 | 24 |
| 22 | 1.4.3 | Finishes |  | 18d | 2026-06-29 | 21 |  |  |  | 2026-07-02 | 2026-07-27 | 18d | 0.44d |  |  | 10,000 | 10,000 | A170 | 25 |
| 24 | 1.5.1 | Metal Stud Framing |  | 17d | 2026-07-24 | 16FS+1d, 22FS+1d |  |  |  | 2026-07-29 | 2026-08-20 | 17d | 0.44d |  |  | 35,000 | 35,000 | A180 | 27 |
| 25 | 1.5.2 | One Side Drywall |  | 23d | 2026-08-18 | 24 |  |  |  | 2026-08-21 | 2026-09-22 | 23d | 0.44d |  |  | 100,000 | 100,000 | A190 | 28 |
| 26 | 1.5.3 | MEP Rough In |  | 30d | 2026-09-18 | 25 |  |  |  | 2026-09-23 | 2026-11-03 | 30d | 0.44d | 0.11d |  | 120,000 | 120,000 | A200 | 29 |
| 27 | 1.5.4 | Restroom Specialties |  | 25d | 2026-10-06 |  |  |  |  | 2026-10-06 | 2026-11-09 | 25d | 0.33d |  | start no earlier than 2026-10-06 | 30,000 | 30,000 | A210 | 30 |
| 28 | 1.5.5 | Control Room |  | 16d | 2026-11-10 | 27 |  |  |  | 2026-11-10 | 2026-12-01 | 16d | 0.33d |  |  | 78,000 | 78,000 | A220 | 31 |
| 29 | 1.5.6 | MEP Overhead |  | 22d | 2026-11-17 | 26, 28SS+5d |  |  |  | 2026-11-17 | 2026-12-16 | 22d | 0.33d |  |  | 300,000 | 300,000 | A230 | 32 |
| 30 | 1.5.7 | Ceiling Grid |  | 15d | 2026-11-17 | 29SS |  |  |  | 2026-11-17 | 2026-12-07 | 15d | 0.33d |  |  | 25,000 | 25,000 | A240 | 33 |
| 31 | 1.5.8 | ACT |  | 18d | 2026-12-08 | 30 |  |  |  | 2026-12-08 | 2026-12-31 | 18d | 0.33d |  |  | 10,000 | 10,000 | A250 | 34 |
| 32 | 1.5.9 | Flooring |  | 15d | 2027-01-01 | 31 |  |  |  | 2027-01-01 | 2027-01-21 | 15d | 0.33d |  |  | 45,000 | 45,000 | A260 | 35 |
| 33 | 1.5.10 | Specialties |  | 9d | 2027-01-22 | 32 |  |  |  | 2027-01-22 | 2027-02-03 | 9d | 0.33d |  |  | 160,000 | 160,000 | A270 | 36 |
| 34 | 1.5.11 | Paint |  | 10d | 2027-02-04 | 33 |  |  |  | 2027-02-04 | 2027-02-17 | 10d | 0.33d |  |  | 80,000 | 80,000 | A280 | 38 |
| 35 | 1.5.12 | Furnishings |  | 10d | 2027-02-08 | 34SS+2d |  |  |  | 2027-02-08 | 2027-02-19 | 10d | 0.33d |  |  | 43,000 | 43,000 | A290 | 37 |
| 36 | 1.5.13 | Owner Specialty Equipment |  | 7d | 2027-02-22 | 35 |  |  |  | 2027-02-22 | 2027-03-02 | 7d | 0.33d |  |  | 10,000 | 10,000 | A300 | 66 |
| 38 | 1.6.1 | As Build |  | 20d | 2025-12-17 A | 3 | 100% |  | 2026-01-13 | 2025-12-17 | 2026-01-13 | 20d |  |  |  | 5,000 | 5,000 | A310 | 40 |
| 39 | 1.6.2 | ACM Removal |  | 55d | 2026-01-14 A |  | 10% | 49.3d |  | 2026-01-14 | 2026-04-07 | 60d |  | 3.22d |  |  | 47,000 | - | 41 |
| 44 | 1.6.3 | Metal Stud Framing |  | 28d | 2026-04-01 | 43 |  |  |  | 2026-04-07 | 2026-05-14 | 28d |  |  |  | 25,000 | 25,000 | A360 | 46 |
| 45 | 1.6.4 | One Side Drywall |  | 20d | 2026-05-11 | 44 |  |  |  | 2026-05-15 | 2026-06-11 | 20d |  |  |  | 23,000 | 23,000 | A370 | 47 |
| 46 | 1.6.5 | MEP Rough In |  | 26d | 2026-06-08 | 45 |  |  |  | 2026-06-12 | 2026-07-17 | 26d |  |  |  | 240,000 | 240,000 | A380 | 48 |
| 47 | 1.6.6 | MEP Overhead |  | 20d | 2026-07-14 | 46 |  |  |  | 2026-07-20 | 2026-08-14 | 20d |  |  |  | 180,000 | 180,000 | A390 | 49 |
| 48 | 1.6.7 | Ceiling Grid |  | 18d | 2026-08-11 | 47 |  |  |  | 2026-08-17 | 2026-09-09 | 18d |  |  |  | 10,000 | 10,000 | A400 | 50 |
| 49 | 1.6.8 | Flooring |  | 23d | 2026-09-04 | 48 |  |  |  | 2026-09-10 | 2026-10-12 | 23d |  |  |  | 35,000 | 35,000 | A410 | 51 |
| 50 | 1.6.9 | ACT |  | 11d | 2026-10-07 | 49, 49SS |  |  |  | 2026-10-13 | 2026-10-27 | 11d | 0.11d |  |  | 20,000 | 20,000 | A420 | 52 |
| 51 | 1.6.10 | Specialties |  | 10d | 2026-10-07 | 49 |  |  |  | 2026-10-13 | 2026-10-26 | 10d |  |  |  | 35,000 | 35,000 | A430 | 53 |
| 52 | 1.6.11 | Furnishings |  | 15d | 2026-10-21 | 51 |  |  |  | 2026-10-27 | 2026-11-16 | 15d |  |  |  | 50,000 | 50,000 | A440 | 54 |
| 53 | 1.6.12 | Paint |  | 12d | 2026-11-11 | 50, 52 |  |  |  | 2026-11-17 | 2026-12-02 | 12d |  |  |  | 34,000 | 34,000 | A450 | 55 |
| 54 | 1.6.13 | Mobilize | milestone | 0d | 2026-11-26 | 53 |  |  |  | 2026-12-03 | 2026-12-02 |  |  |  |  | 3,000 | 3,000 | A460 | 56 |
| 56 | 1.7.1 | Utilities |  | 21d | 2026-11-27 | 54 |  |  |  | 2026-12-03 | 2026-12-31 | 21d |  |  |  | 50,000 | 50,000 | A470 | 58 |
| 57 | 1.7.2 | Slab on Grade |  | 15d | 2026-12-28 | 56 |  |  |  | 2027-01-01 | 2027-01-21 | 15d |  |  |  | 45,000 | 45,000 | A480 | 59 |
| 58 | 1.7.3 | Walls |  | 20d | 2027-01-18 | 57 |  |  |  | 2027-01-22 | 2027-02-18 | 20d |  |  |  | 60,000 | 60,000 | A490 | 60 |
| 59 | 1.7.4 | Roofing |  | 10d | 2027-02-15 | 58 |  |  |  | 2027-02-19 | 2027-03-04 | 10d |  |  |  | 20,000 | 20,000 | A500 | 61 |
| 60 | 1.7.5 | Equipment |  | 20d | 2027-03-01 | 59, 59SS |  |  |  | 2027-03-05 | 2027-04-01 | 20d |  |  |  | 100,000 | 100,000 | A510 | 62 |

Notes:
- 1: 16260865
- 2: 16260866
- 6: 16260867
- 12: 16260921
- 19: 16260922
- 23: 16260884
- 37: 16260879
- 55: 16260869
- 62: 16260918
- 3: 16260886
- 4: 16260908
- 5: 16260909
- 7: 16260889
- 8: 16260861
- 9: 16260896
- 10: 16260901
- 11: 16260903
- 13: 16260883
- 14: 16260862
- 15: 16260916
- 16: 16260876
- 17: 16260915
- 18: 16260902
- 20: 16260880
- 21: 16260864
- 22: 16260912
- 24: 16260906
- 25: 16260913
- 26: 16260919
- 27: 16260895
- 28: 16260893
- 29: 16260904
- 30: 16260863
- 31: 16260892
- 32: 16260875
- 33: 16260917
- 34: 16260887
- 35: 16260872
- 36: 16260900
- 38: 16260905
- 39: 16260868
- 44: 16260898
- 45: 16260873
- 46: 16260871
- 47: 16260888
- 48: 16260899
- 49: 16260885
- 50: 16260877
- 51: 16260897
- 52: 16260874
- 53: 16260910
- 54: 16260894
- 56: 16260882
- 57: 16260881
- 58: 16260870
- 59: 16260891
- 60: 16260914

| ID | WBS | Task | Duration | Start | Predecessors | Complete | Remaining | Baseline start | Baseline finish | Baseline duration | Cost | Baseline cost | Unique ID | CustomID |
| --- | --- | --- | --- | --- | --- | --- | --- | --- | --- | --- | --- | --- | --- | --- |
| 61 | 1.7.6 | **Finishes** | 10d | 2027-03-29 | 60 |  |  | 2027-04-02 | 2027-04-15 | 10d | 30,000 | 30,000 | 64 | A520 |
| 40 | 1.6.2.1 | MOP | 30d | 2026-01-14 A | 38 | 24% | 22.74d | 2026-01-14 | 2026-02-24 | 30d | 2,000 | 2,000 | 42 | A320 |
| 41 | 1.6.2.2 | Abatement | 15d | 2026-02-25 | 40 |  |  | 2026-02-24 | 2026-03-23 | 20d | 30,000 | 30,000 | 43 | A330 |
| 42 | 1.6.2.3 | Cleaning | 10d | 2026-03-18 | 41 |  |  | 2026-03-24 | 2026-04-06 | 10d | 10,000 | 10,000 | 44 | A340 |
| 43 | 1.6.2.4 | Make Ready | 10d | 2026-03-18 | 42SS |  |  | 2026-03-24 | 2026-04-06 | 10d | 5,000 | 5,000 | 45 | A350 |

Notes:
- 61: 16260920
- 40: 16260907
- 41: 16260911
- 42: 16260890
- 43: 16260878
