# OIAA Admin 2nd Fl Restroom Renovation

Schedule from MS Project XML, 2023-09-21 to 2024-03-18.

## Calendars

- Standard: Mon-Fri 08:00-12:00, 13:00-17:00; Sat-Sun off. Exceptions (off unless hours are given): 2023-11-10 (Veterans Day), 2023-11-23 (Thanksgiving Day), 2023-12-25 (Christmas Day), 2024-01-01 (New Year Day), 2024-01-15 (MLK Day).

## Schedule

| ID | WBS | Task | Type | Duration | Start | Finish | Predecessors | Baseline start | Baseline finish | Baseline duration | Total slack | Free slack | Constraint | Work |
| --- | --- | --- | --- | --- | --- | --- | --- | --- | --- | --- | --- | --- | --- | --- |
| 1 | 1 | **Pre-Construction** |  | 87d | 2023-09-21 | 2024-01-26 |  | 2023-09-21 | 2024-01-26 | 87d | 0d |  |  |  |
| 2 | 1.1 | Pre-Construction Meeting |  | 1d | 2023-09-21 | 2023-09-21 |  | 2023-09-21 | 2023-09-21 | 1d | 76d | 0d |  |  |
| 3 | 1.2 | Receive Notice to Proceed |  | 1d | 2023-09-22 | 2023-09-22 | 2 | 2023-09-22 | 2023-09-22 | 1d | 76d | 0d |  |  |
| 4 | 1.3 | Prepare and submit Submittals, Shop Drawings, Schedule of Values |  | 10d | 2023-09-25 | 2023-10-06 | 3 | 2023-09-25 | 2023-10-06 | 10d | 76d | 0d |  |  |
| 5 | 1.4 | Owner Review of Submittals, Shop Drawings, Schedule of Values |  | 5d | 2023-10-09 | 2023-10-13 | 4 | 2023-10-09 | 2023-10-13 | 5d | 76d | 0d |  |  |
| 6 | 1.5 | Resubmit Submittals, Shop Drawings, Schedule of Values |  | 5d | 2023-10-16 | 2023-10-20 | 5 | 2023-10-16 | 2023-10-20 | 5d | 76d | 0d |  |  |
| 7 | 1.6 | Pull Permit |  | 1d | 2023-10-23 | 2023-10-23 | 6 | 2023-10-23 | 2023-10-23 | 1d | 76d | 4d |  |  |
| 8 | 1.7 | Long Material Lead Time | manual | 60d | 2023-10-30 | 2024-01-26 | 7 | 2023-10-30 | 2024-01-26 | 60d |  |  |  |  |
| 9 | 2 | **Construction** |  | 80d | 2023-11-22 | 2024-03-18 |  | 2023-11-22 | 2024-05-07 | 116d | 0d |  |  | 432h |
| 10 | 2.1 | Mobilization/Safe Off |  | 2d | 2023-11-22 | 2023-11-24 |  | 2023-11-22 | 2023-11-24 | 2d | 0d |  | start no earlier than 2023-11-22 | 16h |
| 11 | 2.2 | **Demolition (Night Work)** |  | 12d | 2023-11-27 | 2023-12-12 |  | 2023-11-27 | 2023-12-04 | 6d | 0d |  |  | 48h |
| 12 | 2.2.1 | Partitions, Accessories and Fixtures (Salvage per plan) |  | 2d | 2023-11-27 | 2023-11-28 | 10 | 2023-11-27 | 2023-11-28 | 2d | 0d |  |  | 16h |
| 13 | 2.2.2 | Walls/Flooring |  | 4d | 2023-11-29 | 2023-12-04 | 12 | 2023-11-29 | 2023-12-04 | 4d | 0d |  |  | 32h |
| 14 | 2.2.3 | Added time for RFI review of discovered existing conditions | manual | 3d | 2023-12-05 | 2023-12-07 | 13 |  |  |  |  |  |  |  |
| 15 | 2.2.4 | Additional Demo-Wet wall framing, rough plumbing, concrete float | manual | 3d | 2023-12-08 | 2023-12-12 | 14 |  |  |  |  |  |  |  |
| 16 | 2.3 | Layout |  | 1d | 2023-12-13 | 2023-12-13 | 15 | 2023-12-05 | 2023-12-05 | 1d | 0d |  |  |  |
| 17 | 2.4 | Install waste line plumbing and drain | manual | 4d | 2023-12-14 | 2023-12-19 | 16 |  |  |  |  |  |  |  |
| 18 | 2.5 | Relocate rough plumbing |  | 10d | 2023-12-20 | 2024-01-04 | 17 | 2023-12-06 | 2023-12-19 | 10d | 0d |  |  | 80h |
| 19 | 2.6 | Install framing |  | 3d | 2024-01-05 | 2024-01-09 | 18 | 2023-12-20 | 2023-12-22 | 3d | 0d |  |  | 24h |
| 20 | 2.7 | Install framing @ wet wall | manual | 2d | 2024-01-10 | 2024-01-11 | 19 |  |  |  |  |  |  |  |
| 21 | 2.8 | Install rough electrical |  | 2d | 2024-01-12 | 2024-01-16 | 20 | 2023-12-26 | 2023-12-27 | 2d | 0d |  |  |  |
| 22 | 2.9 | Hang drywall & Patch |  | 4d | 2024-01-17 | 2024-01-22 | 21 | 2023-12-28 | 2024-01-03 | 4d | 0d |  |  | 32h |
| 23 | 2.10 | Inspection - Rough Electrical & Plumbing |  | 1d | 2024-01-23 | 2024-01-23 | 22 | 2024-01-04 | 2024-01-04 | 1d | 0d |  |  |  |
| 24 | 2.11 | Tape/ Mud |  | 3d | 2024-01-24 | 2024-01-26 | 23 | 2024-01-05 | 2024-01-09 | 3d | 0d |  |  | 24h |
| 25 | 2.12 | Paint |  | 4d | 2024-01-29 | 2024-02-01 | 24 | 2024-01-10 | 2024-01-16 | 4d | 0d |  |  | 32h |
| 26 | 2.13 | Install new Lighting |  | 3d | 2024-02-02 | 2024-02-06 | 25 | 2024-01-17 | 2024-01-19 | 3d | 0d |  |  | 24h |
| 27 | 2.14 | Install wall tiles |  | 6d | 2024-02-07 | 2024-02-14 | 26 | 2024-01-22 | 2024-01-29 | 6d | 0d |  |  | 48h |
| 28 | 2.15 | Install floor tiles |  | 6d | 2024-02-15 | 2024-02-22 | 27 | 2024-01-30 | 2024-02-06 | 6d | 0d |  |  | 48h |
| 29 | 2.16 | Field Verification for Partitions | manual | 1d | 2024-02-23 | 2024-02-23 | 28 | 2024-02-06 | 2024-02-06 | 1d |  |  |  |  |
| 30 | 2.17 | Install millwork |  | 2d | 2024-02-23 | 2024-02-26 | 28 | 2024-02-07 | 2024-02-08 | 2d | 0d |  |  |  |
| 31 | 2.18 | Install plumbing fixtures |  | 3d | 2024-02-27 | 2024-02-29 | 30 | 2024-02-09 | 2024-02-13 | 3d | 0d |  |  | 24h |
| 32 | 2.19 | Install partitions and accessories |  | 4d | 2024-03-01 | 2024-03-06 | 31 | 2024-02-14 | 2024-02-19 | 4d | 0d |  |  | 32h |
| 33 | 2.20 | Punch Walk |  | 1d | 2024-03-07 | 2024-03-07 | 32 | 2024-02-20 | 2024-02-20 | 1d | 0d |  |  |  |
| 34 | 2.21 | Pre-Final Inspection |  | 1d | 2024-03-08 | 2024-03-08 | 33 | 2024-02-21 | 2024-02-21 | 1d | 0d |  |  |  |
| 35 | 2.22 | Address punch items |  | 5d | 2024-03-11 | 2024-03-15 | 34 | 2024-02-22 | 2024-02-28 | 5d | 0d |  |  |  |
| 36 | 2.23 | Final Clean & Demobilize |  | 1d | 2024-03-18 | 2024-03-18 | 35 | 2024-02-29 | 2024-02-29 | 1d | 0d |  |  |  |
| 37 | 2.24 | Install permanent partitions | manual | 1d | 2023-11-22 | 2023-11-22 |  | 2024-05-01 | 2024-05-06 | 4d |  |  |  |  |
| 38 | 2.25 | Final Inspection | manual | 1d | 2023-11-22 | 2023-11-22 |  | 2024-05-07 | 2024-05-07 | 1d |  |  |  |  |
